# Metasepi Project

Schedule from Planner, 2014-05-12 to 2015-07-03.

## Calendars

- デフォルト: Mon-Fri 08:00-12:00, 13:00-17:00; Sat-Sun off.

## Schedule

| ID | WBS | Task | Type | Duration | Start | Finish | Predecessors | Constraint | Work |
| --- | --- | --- | --- | --- | --- | --- | --- | --- | --- |
| 1 | 1 | **ATS demo on tiny CPU** |  |  | 2014-05-12 | 2014-05-26 |  |  | 88h |
| 2 | 1.1 | AVR support to ATS |  |  | 2014-05-12 | 2014-05-20 |  |  | 51h |
| 3 | 1.2 | ARM support to ATS |  |  | 2014-05-20 | 2014-05-26 | 2 |  | 37h |
| 4 | 2 | **Translate ATS doc** |  |  | 2014-05-12 | 2015-03-18 |  |  | 1784h |
| 5 | 2.1 | ATS2TUTORIAL |  |  | 2014-05-12 | 2014-05-26 |  |  | 88h |
| 6 | 2.2 | INT2PROGINATS |  |  | 2014-05-27 | 2014-06-20 | 5 |  | 152h |
| 7 | 2.3 | ATS Paper |  |  | 2014-06-23 | 2014-08-12 | 6 |  | 291.5h |
| 8 | 2.4 | Wiki |  |  | 2014-08-12 | 2014-09-23 | 7 |  | 240h |
| 9 | 2.5 | BLUISH CODER |  |  | 2014-09-23 | 2015-02-03 | 8 |  | 760.5h |
| 10 | 2.6 | DML Paper |  |  | 2015-02-03 | 2015-03-18 | 9 |  | 252h |
| 11 | 3 | **Translate Metasepi blog** |  |  | 2014-05-27 | 2014-08-22 | 5 |  | 512h |
| 12 | 3.1 | Translate past entries |  |  | 2014-05-27 | 2014-08-22 |  |  | 512h |
| 13 | 4 | OSC@Nagoya | milestone | 0d | 2014-07-04 | 2014-07-04 |  | must start on 2014-07-04 |  |
| 14 | 5 | OSC@Kansai | milestone | 0d | 2014-08-01 | 2014-08-01 |  | must start on 2014-08-01 |  |
| 15 | 6 | Haskell Symposium | milestone | 0d | 2014-09-04 | 2014-09-04 | 11 | must start on 2014-09-04 |  |
| 16 | 7 | **Setup to snatch Linux** |  |  | 2014-08-25 | 2014-11-05 | 11 |  | 424h |
| 17 | 7.1 | Setup raspberrypi |  |  | 2014-08-25 | 2014-10-08 |  |  | 264h |
| 18 | 7.2 | Setup ATS config |  |  | 2014-10-09 | 2014-10-22 | 17 |  | 80h |
| 19 | 7.3 | Choose snatch target |  |  | 2014-10-23 | 2014-11-05 | 18 |  | 80h |
| 20 | 8 | **Lifegame on FSM-55** |  |  | 2014-11-06 | 2015-01-14 | 16 |  | 400h |
| 21 | 8.1 | Snatch FSM-55 |  |  | 2014-11-06 | 2014-11-26 |  |  | 120h |
| 22 | 8.2 | Lifegame on POSIX |  |  | 2014-11-27 | 2014-12-17 | 21 |  | 120h |
| 23 | 8.3 | Lifegame on FSM-55 |  |  | 2014-12-18 | 2015-01-14 | 22 |  | 160h |
| 24 | 9 | **ATS Ethernet driver** |  |  | 2015-01-15 | 2015-02-25 | 20 |  | 240h |
| 25 | 9.1 | Support mbed |  |  | 2015-01-15 | 2015-02-25 |  |  | 240h |

| ID | WBS | Task | Type | Duration | Start | Finish | Predecessors | Constraint | Work |
| --- | --- | --- | --- | --- | --- | --- | --- | --- | --- |
| 26 | 10 | **Web framework** |  |  | 2015-02-26 | 2015-05-06 | 24 |  | 400h |
| 27 | 10.1 | On POSIX |  |  | 2015-02-26 | 2015-03-18 |  |  | 120h |
| 28 | 10.2 | On mbed |  |  | 2015-03-19 | 2015-04-08 | 27 |  | 120h |
| 29 | 10.3 | Wiki application |  |  | 2015-04-09 | 2015-05-06 | 28 |  | 160h |
| 30 | 11 | OSC@Tokyo | milestone | 0d | 2014-10-20 | 2014-10-18 |  | must start on 2014-10-18 |  |
| 31 | 12 | **ATS package manager** |  |  | 2015-05-07 | 2015-06-05 | 26 |  | 176h |
| 32 | 12.1 | Understand opam design |  |  | 2015-05-07 | 2015-05-27 |  |  | 120h |
| 33 | 12.2 | Get design for ATS |  |  | 2015-05-28 | 2015-06-05 | 32 |  | 56h |
| 34 | 13 | Parsec on ATS |  |  | 2015-06-08 | 2015-07-03 | 31 |  | 160h |
